# PSN_Coding plan v0.1

Schedule from MS Project, 2013-02-01 to 2013-04-05.

## Calendars

- Standard: Mon-Sun 08:00-12:00, 13:00-17:00.

## Resources

| Resource |
| --- |
| QuangLM |
| QuocNM |
| DungTQ |
| QuangVT |
| VuongNM |
| ChungNT |
| Vietvh |
| HungCQ |
| NamNV |

## Schedule

| ID | WBS | Task | Duration | Start | Finish | Predecessors | Total slack | Free slack | Constraint | Resources | Work |
| --- | --- | --- | --- | --- | --- | --- | --- | --- | --- | --- | --- |
| 1 | 1 | **RFS Coding phase** | 64d | 2013-02-01 | 2013-04-05 |  |  |  |  |  | 1328h |
| 2 | 1.1 | **Admin pages** | 25d | 2013-02-01 | 2013-02-25 |  |  |  |  | ChungNT | 368h |
| 3 | 1.1.1 | Manage roles | 2d | 2013-02-01 | 2013-02-02 |  | 21d | 0d |  | ChungNT | 16h |
| 4 | 1.1.2 | Manage Province | 2d | 2013-02-03 | 2013-02-04 | 3 | 21d |  |  | ChungNT | 16h |
| 5 | 1.1.3 | Manage categories | 2d | 2013-02-01 | 2013-02-02 |  | 23d |  |  | ChungNT | 16h |
| 6 | 1.1.4 | Manage posts | 6d | 2013-02-04 | 2013-02-09 |  | 14d | 0d | start no earlier than 2013-02-04 | ChungNT | 48h |
| 7 | 1.1.5 | Manage District | 2d | 2013-02-07 | 2013-02-08 | 4 | 56d |  | start no earlier than 2013-02-07 | ChungNT | 16h |
| 8 | 1.1.6 | Manage Locations | 2d | 2013-02-10 | 2013-02-11 | 6 | 14d |  |  | ChungNT | 16h |
| 9 | 1.1.7 | Manage Bad Words | 2d | 2013-02-07 | 2013-02-08 |  | 56d |  | start no earlier than 2013-02-07 | ChungNT | 16h |
| 10 | 1.1.8 | Manage payment | 3d | 2013-02-07 | 2013-02-09 |  | 55d |  | start no earlier than 2013-02-07 | ChungNT | 24h |
| 11 | 1.2 | **Users** | 25d | 2013-02-01 | 2013-02-25 |  |  |  |  | Vietvh | 320h |
| 12 | 1.2.1 | Login | 2d | 2013-02-01 | 2013-02-02 |  | 13d | 0d |  | Vietvh | 16h |
| 13 | 1.2.2 | Logout | 1d | 2013-02-03 | 2013-02-03 | 12 | 13d | 0d |  | Vietvh | 8h |
| 14 | 1.2.3 | Register | 2d | 2013-02-04 | 2013-02-05 | 13 | 13d | 0d |  | Vietvh | 16h |
| 15 | 1.2.4 | Change my info | 1d | 2013-02-06 | 2013-02-06 | 14 | 13d | 0d |  | Vietvh | 8h |
| 16 | 1.2.5 | User page | 5d | 2013-02-07 | 2013-02-11 | 15 | 13d | 0d |  | Vietvh | 40h |
| 17 | 1.2.6 | Edit Post | 1d | 2013-02-01 | 2013-02-01 |  | 24d |  |  | Vietvh | 8h |
| 18 | 1.2.7 | Create new post | 2d | 2013-02-01 | 2013-02-02 |  | 23d |  |  | Vietvh | 16h |
| 19 | 1.2.8 | Forgot password | 1d | 2013-02-12 | 2013-02-12 | 16 | 13d |  |  | Vietvh | 8h |
| 20 | 1.3 | **Search places** | 25d | 2013-02-01 | 2013-02-25 |  |  |  |  | HungCQ | 320h |
| 21 | 1.3.1 | Quick search | 5d | 2013-02-01 | 2013-02-05 |  | 3d | 0d |  | HungCQ | 40h |
| 22 | 1.3.2 | Advanced search | 5d | 2013-02-06 | 2013-02-10 | 21 | 3d | 0d |  | HungCQ | 40h |
| 23 | 1.3.3 | Search result page | 5d | 2013-02-11 | 2013-02-15 | 22 | 3d | 0d |  | HungCQ | 40h |
| 24 | 1.4 | **Post details page** | 21d | 2013-02-05 | 2013-02-25 |  |  |  |  | HungCQ | 224h |
| 25 | 1.4.1 | Details | 5d | 2013-02-16 | 2013-02-20 | 23 | 3d | 0d |  | HungCQ | 40h |
| 26 | 1.4.2 | Report post | 1d | 2013-02-21 | 2013-02-21 | 25 | 3d | 0d |  | HungCQ | 8h |
| 27 | 1.4.3 | Post to Facebook/Twitter | 1d | 2013-02-22 | 2013-02-22 | 26 | 3d |  |  | NamNV | 8h |
| 28 | 1.5 | Edit posts | 3d | 2013-02-20 | 2013-02-22 |  | 42d |  | start no earlier than 2013-02-20 | HungCQ | 24h |
| 29 | 1.6 | Compare page | 2d | 2013-02-20 | 2013-02-21 |  | 43d |  | start no earlier than 2013-02-20 | HungCQ | 16h |
| 30 | 1.7 | Index page | 2d | 2013-02-20 | 2013-02-21 |  | 43d |  | start no earlier than 2013-02-20 | HungCQ | 16h |
| 31 | 1.8 | Other work | 5d | 2013-02-20 | 2013-02-24 | 30 | 40d |  | start no earlier than 2013-02-20 | HungCQ | 40h |
